# Plan de trabajo JuarezNow

Schedule from ProjectLibre, 2026-08-11 to 2026-11-06.

## Calendars

- Todo el equipo[Imported]: Mon-Sun 08:00-12:00, 13:00-17:00.

## Resources

| Resource | Rate |
| --- | --- |
| No Asignado |  |
| PM / Gestión | 193.75 |
| Analista / QA | 112.5 |
| Diseño UX/UI | 156.25 |
| Desarrollo Backend | 162.5 |
| Desarrollo Frontend | 156.25 |

## Schedule

| ID | WBS | Task | Type | Duration | Start | Finish | Predecessors | Constraint | Resources |
| --- | --- | --- | --- | --- | --- | --- | --- | --- | --- |
| 1 | 0 | **JuarezNow** |  | 88d | 2026-08-11 | 2026-11-06 |  |  |  |
| 2 | 1 | **FASE 1 — Planeación e investigación inicial (CONCLUIDA)** |  | 9d | 2026-08-11 | 2026-08-19 |  |  |  |
| 3 | 1.1 | **1.1 Arranque** |  | 9d | 2026-08-11 | 2026-08-19 |  |  |  |
| 4 | 1.1.1 | Definición de objetivos, misión, visión y alcance |  | 3d | 2026-08-11 | 2026-08-13 |  |  | PM / Gestión |
| 5 | 1.1.2 | Diseño del instrumento de encuesta |  | 6d | 2026-08-14 | 2026-08-19 | 4 |  | Analista / QA |
| 6 | 1.1.3 | Creación de entornos de trabajo (GitHub, Jira, Drive) |  | 1d | 2026-08-11 | 2026-08-11 |  |  | PM / Gestión |
| 7 | 2 | **FASE 2 — Análisis y diseño · 9 – 28 de septiembre de 2026** |  | 21d | 2026-09-09 | 2026-09-29 |  |  |  |
| 8 | 2.1 | **2.0 Inicio de fase** |  | 0d | 2026-09-09 | 2026-09-09 |  |  |  |
| 9 | 2.1.1 | HITO: Inicio de Fase 2 | milestone | 0d | 2026-09-09 | 2026-09-09 | 5, 6 | start no earlier than 2026-09-09 |  |
| 10 | 2.2 | **2.1 Investigación y análisis** |  | 19d | 2026-09-09 | 2026-09-27 |  |  |  |
| 11 | 2.2.1 | Aplicación de la encuesta (~150 personas) |  | 10d | 2026-09-09 | 2026-09-18 | 9 |  | PM / Gestión; Analista / QA; Diseño UX/UI; Desarrollo Backend; Desarrollo Frontend |
| 12 | 2.2.2 | Análisis de recursos y costos |  | 3d | 2026-09-14 | 2026-09-16 | 9, 19 |  | PM / Gestión |
| 13 | 2.2.3 | Resultados de encuesta |  | 3d | 2026-09-19 | 2026-09-21 | 11, 25 |  | Analista / QA |
| 14 | 2.2.4 | Análisis FODA |  | 3d | 2026-09-22 | 2026-09-24 | 13 |  | Analista / QA |
| 15 | 2.2.5 | Plan de trabajo |  | 3d | 2026-09-25 | 2026-09-27 | 12, 14, 44 |  | PM / Gestión |
| 16 | 2.3 | **2.2 Configuración de entornos** |  | 7d | 2026-09-09 | 2026-09-15 |  |  |  |
| 17 | 2.3.1 | Agregar archivos al repositorio (main, develop, .gitignore, README) |  | 3d | 2026-09-09 | 2026-09-11 | 9 |  | Desarrollo Backend |
| 18 | 2.3.2 | Configurar proyecto Figma |  | 2d | 2026-09-12 | 2026-09-13 | 9, 29 |  | Diseño UX/UI |
| 19 | 2.3.3 | Configurar proyecto Jira |  | 2d | 2026-09-12 | 2026-09-13 | 9, 38 |  | PM / Gestión |
| 20 | 2.3.4 | Configurar proyecto Django |  | 2d | 2026-09-12 | 2026-09-13 | 17 |  | Desarrollo Backend |
| 21 | 2.3.5 | Configurar proyecto React |  | 2d | 2026-09-13 | 2026-09-14 | 17, 37 |  | Desarrollo Frontend |
| 22 | 2.3.6 | Configurar PostgreSQL + variables de entorno (.env) |  | 2d | 2026-09-14 | 2026-09-15 | 20 |  | Desarrollo Backend |
| 23 | 2.4 | **2.3 Modelado y arquitectura** |  | 13d | 2026-09-09 | 2026-09-21 |  |  |  |
| 24 | 2.4.1 | Diagrama de casos de uso |  | 4d | 2026-09-09 | 2026-09-12 | 9 |  | Analista / QA |
| 25 | 2.4.2 | Diagramas de secuencia (flujos principales) |  | 3d | 2026-09-14 | 2026-09-16 | 24, 39 |  | Analista / QA |
| 26 | 2.4.3 | Modelo entidad-relación / base de datos |  | 3d | 2026-09-16 | 2026-09-18 | 22, 24 |  | Desarrollo Backend |
| 27 | 2.4.4 | Definición de arquitectura técnica (stack, patrones, estructura) |  | 3d | 2026-09-19 | 2026-09-21 | 20, 21, 22, 26 |  | Desarrollo Backend |

| ID | WBS | Task | Type | Duration | Start | Finish | Predecessors | Resources |
| --- | --- | --- | --- | --- | --- | --- | --- | --- |
| 28 | 2.5 | **2.4 Diseño UX/UI** |  | 9d | 2026-09-09 | 2026-09-17 |  |  |
| 29 | 2.5.1 | Identidad de la empresa |  | 3d | 2026-09-09 | 2026-09-11 | 9 | Diseño UX/UI |
| 30 | 2.5.2 | Definir fuentes y paletas de colores |  | 2d | 2026-09-12 | 2026-09-13 | 18, 29 | Diseño UX/UI |
| 31 | 2.5.3 | Wireframes |  | 3d | 2026-09-14 | 2026-09-16 | 18, 24, 29, 30 | Diseño UX/UI |
| 32 | 2.5.4 | Crear template base (navbar, footer, bloque content, mensajes, CSS/Bootstrap) |  | 3d | 2026-09-15 | 2026-09-17 | 21, 30, 40 | Desarrollo Frontend |
| 33 | 2.5.5 | Prototipo visual |  | 3d | 2026-09-14 | 2026-09-16 | 30, 31 | Diseño UX/UI |
| 34 | 2.6 | **2.5 Documentación SRS (cap. 1 y 2)** |  | 18d | 2026-09-09 | 2026-09-26 |  |  |
| 35 | 2.6.1 | 1.1 Propósito |  | 1d | 2026-09-09 | 2026-09-09 | 9 | PM / Gestión |
| 36 | 2.6.2 | 1.2 Alcance |  | 1d | 2026-09-10 | 2026-09-10 | 35 | PM / Gestión |
| 37 | 2.6.3 | 1.3 Definiciones, acrónimos y abreviaturas |  | 2d | 2026-09-11 | 2026-09-12 | 36 | Desarrollo Frontend |
| 38 | 2.6.4 | 1.5 Visión general |  | 1d | 2026-09-11 | 2026-09-11 | 36 | PM / Gestión |
| 39 | 2.6.5 | 2.2 Funciones del producto |  | 2d | 2026-09-12 | 2026-09-13 | 38 | Analista / QA |
| 40 | 2.6.6 | 2.1 Perspectiva del producto |  | 2d | 2026-09-12 | 2026-09-13 | 38 | Desarrollo Frontend |
| 41 | 2.6.7 | 2.5 Suposiciones y dependencias |  | 2d | 2026-09-14 | 2026-09-15 | 12, 39, 40 | PM / Gestión |
| 42 | 2.6.8 | 2.6 Distribución de requerimientos |  | 2d | 2026-09-16 | 2026-09-17 | 39, 40, 41 | PM / Gestión |
| 43 | 2.6.9 | 2.3 Características de los usuarios |  | 3d | 2026-09-22 | 2026-09-24 | 13, 33, 38 | Diseño UX/UI |
| 44 | 2.6.10 | 2.4 Restricciones |  | 2d | 2026-09-22 | 2026-09-23 | 27, 38 | PM / Gestión |
| 45 | 2.6.11 | 2.2.1 Diagrama de casos de uso |  | 2d | 2026-09-25 | 2026-09-26 | 14, 24, 39 | Analista / QA |
| 46 | 2.6.12 | 1.4 Referencias |  | 1d | 2026-09-25 | 2026-09-25 | 36, 43 | Diseño UX/UI |
| 47 | 2.7 | **2.6 Cierre de fase** |  | 2d | 2026-09-28 | 2026-09-29 |  |  |
| 48 | 2.7.1 | Revisión y consolidación de entregables de Fase 2 |  | 2d | 2026-09-28 | 2026-09-29 | 15, 25, 27, 31, 32, 33, 37, 39, 41, 42, 43, 44, 45, 46 | PM / Gestión |
| 49 | 2.7.2 | HITO: Cierre Fase 2 — Análisis, diseño y prototipo aprobados | milestone | 0d | 2026-09-29 | 2026-09-29 | 12, 13, 14, 15, 17, 18, 19, 20, 21, 22, 24, 25, 26, 27, 29, 30, 31, 32, 33, 35, 36, 37, 38, 39, 40, 41, 42, 43, 44, 45, 46, 48 |  |
| 50 | 3 | **FASE 3 — Desarrollo, pruebas y despliegue · 29 de septiembre – 8 de noviembre de 2026** |  | 34d | 2026-09-30 | 2026-11-02 |  |  |
| 51 | 3.1 | **3.1 Documentación SRS (cap. 3 y 4)** |  | 20d | 2026-09-30 | 2026-10-19 |  |  |
| 52 | 3.1.1 | 3.1 Interfaces externas (Figma) |  | 2d | 2026-09-30 | 2026-10-01 | 33, 46, 49 | Diseño UX/UI |
| 53 | 3.1.2 | 3.2 Historias de Usuario |  | 4d | 2026-09-30 | 2026-10-03 | 24, 42, 45, 49 | Analista / QA |
| 54 | 3.1.3 | 3.4 Requerimientos no funcionales |  | 3d | 2026-09-30 | 2026-10-02 | 27, 38, 48, 49 | PM / Gestión |
| 55 | 3.1.4 | 3.9 Arquitectura |  | 3d | 2026-09-30 | 2026-10-02 | 27, 49 | Desarrollo Backend |
| 56 | 3.1.5 | 3.8 Restricciones de diseño |  | 3d | 2026-10-02 | 2026-10-04 | 52 | Diseño UX/UI |
| 57 | 3.1.6 | 3.3 Requerimientos funcionales |  | 4d | 2026-10-04 | 2026-10-07 | 38, 53 | Analista / QA |
| 58 | 3.1.7 | 3.10 Atributos del sistema de software |  | 3d | 2026-10-05 | 2026-10-07 | 55, 56 | Diseño UX/UI |
| 59 | 3.1.8 | 3.5 Reglas de negocio |  | 3d | 2026-10-08 | 2026-10-10 | 53, 57 | Analista / QA |
| 60 | 3.1.9 | 3.7 Diagrama de procesos |  | 3d | 2026-10-08 | 2026-10-10 | 25, 57, 58 | Diseño UX/UI |
| 61 | 3.1.10 | 3.6 Diagramas de base de datos |  | 3d | 2026-10-07 | 2026-10-09 | 26, 49, 77 | Desarrollo Backend |
| 62 | 3.1.11 | 3.11 Organización de los requerimientos específicos |  | 2d | 2026-10-11 | 2026-10-12 | 52, 53, 54, 56, 57, 58, 59, 60, 61 | PM / Gestión |
| 63 | 3.1.12 | 4.1 Tabla de contenido e índice |  | 2d | 2026-10-13 | 2026-10-14 | 62 | PM / Gestión |
| 64 | 3.1.13 | 4.3 Matriz de riesgos |  | 2d | 2026-10-15 | 2026-10-16 | 62, 63 | PM / Gestión |
| 65 | 3.1.14 | 4.2 Apéndices |  | 3d | 2026-10-17 | 2026-10-19 | 63, 64 | PM / Gestión |

| ID | WBS | Task | Duration | Start | Finish | Predecessors | Constraint | Resources |
| --- | --- | --- | --- | --- | --- | --- | --- | --- |
| 66 | 3.2 | **3.2 Módulo Inicio** | 21d | 2026-09-30 | 2026-10-20 |  |  |  |
| 67 | 3.2.1 | Componente de navegación (Navbar y Footer) | 3d | 2026-09-30 | 2026-10-02 | 32, 49 |  | Desarrollo Frontend |
| 68 | 3.2.2 | Mostrar página de inicio con resumen de reportes del día | 3d | 2026-10-05 | 2026-10-07 | 27, 33, 67, 76 |  | Desarrollo Frontend |
| 69 | 3.2.3 | Consultar listado completo de reportes con paginación | 2d | 2026-10-11 | 2026-10-12 | 82 |  | Desarrollo Backend |
| 70 | 3.2.4 | Mostrar feed de reportes recientes | 3d | 2026-10-18 | 2026-10-20 | 68, 82, 85 |  | Desarrollo Frontend |
| 71 | 3.3 | **3.3 Módulo iniciar sesión** | 5d | 2026-10-03 | 2026-10-07 |  |  |  |
| 72 | 3.3.1 | Inicio de sesión | 3d | 2026-10-03 | 2026-10-05 | 22, 55, 67 |  | Desarrollo Backend |
| 73 | 3.3.2 | Cerrar sesión | 2d | 2026-10-06 | 2026-10-07 | 72 |  | Desarrollo Backend |
| 74 | 3.4 | **3.4 Módulo registrar cuenta** | 4d | 2026-10-03 | 2026-10-06 |  |  |  |
| 75 | 3.4.1 | Registro de usuario | 3d | 2026-10-03 | 2026-10-05 | 22, 67 |  | Desarrollo Frontend |
| 76 | 3.4.2 | Validar datos del formulario de registro | 2d | 2026-10-03 | 2026-10-04 |  | start no earlier than 2026-10-03 | Desarrollo Frontend |
| 77 | 3.4.3 | Confirmar cuenta creada | 2d | 2026-10-05 | 2026-10-06 | 76 |  | Desarrollo Backend |
| 78 | 3.5 | **3.5 Módulo crear reporte** | 6d | 2026-10-08 | 2026-10-13 |  |  |  |
| 79 | 3.5.1 | Crear reporte de incidente (categoría, ubicación y descripción) | 3d | 2026-10-08 | 2026-10-10 | 26, 68, 72, 77 |  | Desarrollo Frontend |
| 80 | 3.5.2 | Capturar ubicación del incidente | 3d | 2026-10-11 | 2026-10-13 | 79 |  | Desarrollo Frontend |
| 81 | 3.5.3 | Adjuntar evidencia fotográfica al reporte | 3d | 2026-10-11 | 2026-10-13 | 61, 79 |  | Desarrollo Backend |
| 82 | 3.5.4 | Enviar y guardar el reporte en el sistema | 3d | 2026-10-08 | 2026-10-10 | 22 | start no earlier than 2026-10-08 | Desarrollo Backend |
| 83 | 3.6 | **3.6 Módulo reportes** | 7d | 2026-10-14 | 2026-10-20 |  |  |  |
| 84 | 3.6.1 | Visualizar mis reportes creados | 3d | 2026-10-14 | 2026-10-16 | 80, 82 |  | Desarrollo Frontend |
| 85 | 3.6.2 | Editar mi reporte | 3d | 2026-10-15 | 2026-10-17 |  | start no earlier than 2026-10-15 | Desarrollo Frontend |
| 86 | 3.6.3 | Eliminar mi reporte | 2d | 2026-10-17 | 2026-10-18 | 69, 84 |  | Desarrollo Backend |
| 87 | 3.6.4 | Validar que solo el autor pueda editar o eliminar su reporte | 2d | 2026-10-19 | 2026-10-20 | 85, 86 |  | Desarrollo Backend |
| 88 | 3.7 | **3.7 Módulo mapa** | 11d | 2026-10-11 | 2026-10-21 |  |  |  |
| 89 | 3.7.1 | Visualizar mapa interactivo de incidentes geolocalizados | 5d | 2026-10-11 | 2026-10-15 | 60, 82 |  | Diseño UX/UI |
| 90 | 3.7.2 | Mostrar pines de incidentes | 3d | 2026-10-16 | 2026-10-18 | 89 |  | Diseño UX/UI |
| 91 | 3.7.3 | Filtrar incidentes por tipo en el mapa | 2d | 2026-10-19 | 2026-10-20 | 90 |  | Diseño UX/UI |
| 92 | 3.7.4 | Mostrar leyenda de categorías | 1d | 2026-10-21 | 2026-10-21 | 90, 91 |  | Diseño UX/UI |

| ID | WBS | Task | Type | Duration | Start | Finish | Predecessors | Resources |
| --- | --- | --- | --- | --- | --- | --- | --- | --- |
| 93 | 3.8 | **3.8 Pruebas** |  | 9d | 2026-10-22 | 2026-10-30 |  |  |
| 94 | 3.8.1 | Pruebas funcionales por módulo |  | 4d | 2026-10-22 | 2026-10-25 | 59, 69, 70, 73, 77, 87, 91, 92 | Analista / QA |
| 95 | 3.8.2 | Corrección de errores detectados |  | 3d | 2026-10-26 | 2026-10-28 | 87, 94 | Desarrollo Backend |
| 96 | 3.8.3 | Pruebas de regresión y validación final |  | 2d | 2026-10-29 | 2026-10-30 | 94, 95 | Analista / QA |
| 97 | 3.9 | **3.9 Despliegue y cierre** |  | 14d | 2026-10-20 | 2026-11-02 |  |  |
| 98 | 3.9.1 | Revisión integral y ajustes finales de la documentación |  | 3d | 2026-10-20 | 2026-10-22 | 65 | PM / Gestión |
| 99 | 3.9.2 | Desplegar el sistema |  | 2d | 2026-10-29 | 2026-10-30 | 95 | Desarrollo Backend |
| 100 | 3.9.3 | Preparación de la presentación y demo final |  | 3d | 2026-10-31 | 2026-11-02 | 92, 99 | Diseño UX/UI |
| 101 | 4 | **CIERRE — Reserva de contingencia y entrega · 9 – 13 de noviembre de 2026** |  | 4d | 2026-11-03 | 2026-11-06 |  |  |
| 102 | 4.1 | **4.1 Reserva y entrega** |  | 4d | 2026-11-03 | 2026-11-06 |  |  |
| 103 | 4.1.1 | Reserva de contingencia y atención de retroalimentación (buffer) |  | 4d | 2026-11-03 | 2026-11-06 | 96, 98, 99, 100 | PM / Gestión; Analista / QA; Diseño UX/UI; Desarrollo Backend; Desarrollo Frontend |
| 104 | 4.1.2 | HITO: Entrega final del proyecto | milestone | 0d | 2026-11-06 | 2026-11-06 | 103 |  |
